# ProyectoGymTime

Schedule from MS Project, 2018-11-06 to 2019-01-11, costs in $.
Everis

## Calendars

- Calendario GymTime: Mon-Thu 09:00-13:00, 15:00-19:00; Fri 09:00-13:00, 14:00-18:00; Sat-Sun off. Exceptions (off unless hours are given): 2018-12-25 (Navidad), 2019-01-01 (Año Nuevo).

## Resources

| Resource | Group | Rate |
| --- | --- | --- |
| Ariel Mendez | Developer | 300 |
| Cristian Rodriguez | System analyst | 300 |
| Roberto Da Silva | Programmer | 200 |
| Ezequiel Taraborelli | System analyst | 250 |
| Agustin Granguetto | Project Leader | 400 |

## Schedule

| ID | WBS | Task | Duration | Start | Finish | Predecessors | Total slack | Free slack | Constraint | Resources | Work | Cost |
| --- | --- | --- | --- | --- | --- | --- | --- | --- | --- | --- | --- | --- |
| 1 | 1 | **Incio Proyecto** | 47d? | 2018-11-06 | 2019-01-11 |  | 0d |  |  |  | 712h | 209,600 |
| 2 | 1.1 | **1 Inicio del Sistemas de Informacion “GymTime”.** | 5d | 2018-11-06 | 2018-11-12 |  | 0d |  |  |  | 40h | 16,000 |
| 3 | 1.1.1 | Analisis de la necesidad 1.1 | 1d | 2018-11-06 | 2018-11-06 |  | 0d |  |  | Agustin Granguetto | 8h | 3,200 |
| 4 | 1.1.2 | Identificacion del Alcance 1.2 | 4d | 2018-11-07 | 2018-11-12 | 3 | 0d |  |  | Agustin Granguetto | 32h | 12,800 |
| 5 | 1.2 | **Definicion y Organización 2** | 10d? | 2018-11-07 | 2018-11-20 |  | 1d |  |  |  | 88h | 22,400 |
| 6 | 1.2.1 | Especificacion del Ambito y Alcance 2.1 | 3d | 2018-11-07 | 2018-11-09 | 3 | 1d | 0d |  | Ezequiel Taraborelli | 24h | 6,000 |
| 7 | 1.2.2 | Organización 2.2 | 2d | 2018-11-12 | 2018-11-13 | 6 | 4d |  |  | Ezequiel Taraborelli | 16h | 4,000 |
| 8 | 1.2.3 | Definicion del plan de trabajo 2.3 | 5d | 2018-11-13 | 2018-11-19 | 6, 4 | 0d |  |  | Cristian Rodriguez | 40h | 10,000 |
| 9 | 1.2.4 | Distribucion del plan de trabajo 2.4 | 1d? | 2018-11-20 | 2018-11-20 | 8 | 7d | 5d |  | Ariel Mendez | 8h | 2,400 |
| 10 | 1.3 | **Estudio de la información Relevante 3** | 9d | 2018-11-20 | 2018-11-30 |  | 0d |  |  |  | 72h | 20,400 |
| 11 | 1.3.1 | Selección y Análisis de antecedentes 3.1 | 6d | 2018-11-20 | 2018-11-27 | 8, 7 | 0d |  |  | Cristian Rodriguez | 48h | 14,400 |
| 12 | 1.3.2 | Valoración de Antecedentes. 3.2 | 3d | 2018-11-28 | 2018-11-30 | 11 | 28d |  |  | Ezequiel Taraborelli | 24h | 6,000 |
| 13 | 1.4 | **Indentificacion de Requisitos 4** | 8d | 2018-11-28 | 2018-12-07 |  | 0d |  |  |  | 128h | 43,600 |
| 14 | 1.4.1 | Estudio de los procesos 4.1 | 5d | 2018-11-28 | 2018-12-04 | 11 | 0d |  |  | Agustin Granguetto; Cristian Rodriguez | 80h | 28,000 |
| 15 | 1.4.2 | Analisis de las necesidades de información 4.2 | 3d | 2018-12-05 | 2018-12-07 | 14 | 0d |  |  | Ezequiel Taraborelli | 24h | 6,000 |
| 16 | 1.4.3 | Catalogacion de requisitos 4.3 | 3d | 2018-11-28 | 2018-11-30 | 11, 9 | 2d | 0d |  | Agustin Granguetto | 24h | 9,600 |
| 17 | 1.5 | **Estudio de los sistemas de información actuales 5** | 11d | 2018-12-03 | 2018-12-17 |  | 0d |  |  |  | 136h | 44,000 |
| 18 | 1.5.1 | Alcance y objetivos del estudio de los sistemas de información 5.1 | 7d | 2018-12-05 | 2018-12-13 | 14 | 2d | 0d |  | Agustin Granguetto | 56h | 22,400 |
| 19 | 1.5.2 | Analisis de sistemas de información actuales. 5.2 | 6d | 2018-12-10 | 2018-12-17 | 15 | 0d |  |  | Ezequiel Taraborelli | 48h | 12,000 |
| 20 | 1.5.3 | Valoracion de Sistemas de información 5.3 | 4d | 2018-12-03 | 2018-12-06 | 16 | 2d | 0d | start no earlier than 2018-11-30 | Cristian Rodriguez | 32h | 9,600 |
| 21 | 1.6 | **Diseño del modelo de sistemas de información 6** | 9d | 2018-12-07 | 2018-12-19 |  | 0d |  |  |  | 32h | 9,600 |
| 22 | 1.6.1 | Compra de un Dominio 6.1 | 2d | 2018-12-07 | 2018-12-10 | 20 | 2d | 0d |  | Ariel Mendez | 16h | 4,800 |
| 23 | 1.6.2 | Eleccion de Hosting 6.2 | 1d | 2018-12-18 | 2018-12-18 | 19 | 0d |  |  | Ariel Mendez | 8h | 2,400 |
| 24 | 1.6.3 | Diseño de BD 6.3 | 1d | 2018-12-19 | 2018-12-19 | 23 | 0d |  |  | Ariel Mendez | 8h | 2,400 |

| ID | WBS | Task | Type | Duration | Start | Finish | Predecessors | Total slack | Free slack | Resources | Work | Cost |
| --- | --- | --- | --- | --- | --- | --- | --- | --- | --- | --- | --- | --- |
| 25 | 1.7 | **Construir Y visualizar 7** |  | 15d | 2018-12-11 | 2019-01-02 |  | 0d |  |  | 104h | 22,400 |
| 26 | 1.7.1 | Construccion 7.1 |  | 3d | 2018-12-11 | 2018-12-13 | 22 | 2d | 0d | Roberto Da Silva | 24h | 4,800 |
| 27 | 1.7.2 | Identidad Visual Corporativa 7.2 |  | 2d | 2018-12-14 | 2018-12-17 | 26, 18 | 2d |  | Ariel Mendez | 16h | 4,800 |
| 28 | 1.7.3 | Maquetacion WEB 7.3 |  | 8d | 2018-12-20 | 2019-01-02 | 24, 27 | 0d |  | Roberto Da Silva | 64h | 12,800 |
| 29 | 1.8 | **Promoción 8** |  | 7d | 2018-12-19 | 2018-12-28 |  | 2d |  |  | 56h | 14,400 |
| 30 | 1.8.1 | Incorporar el sitio web al mensaje corporativo 8.1 |  | 4d | 2018-12-19 | 2018-12-24 | 23 | 2d | 0d | Ariel Mendez | 32h | 9,600 |
| 31 | 1.8.2 | Anuncios Graficos 8.2 |  | 3d | 2018-12-26 | 2018-12-28 | 30 | 2d |  | Roberto Da Silva | 24h | 4,800 |
| 32 | 1.9 | **Revision y aprobación 9** |  | 7d? | 2019-01-03 | 2019-01-11 |  | 0d |  |  | 56h | 16,800 |
| 33 | 1.9.1 | Evaluacion y mejora de la propuesta 9.1 |  | 4d | 2019-01-03 | 2019-01-08 | 28, 31 | 0d |  | Ezequiel Taraborelli | 32h | 8,000 |
| 34 | 1.9.2 | Convocatoria de la presentación 9.2 |  | 1d? | 2019-01-09 | 2019-01-09 | 33 | 0d |  | Ariel Mendez | 8h | 2,400 |
| 35 | 1.9.3 | Aprobacion 9.3 |  | 2d | 2019-01-10 | 2019-01-11 | 34 | 0d |  | Agustin Granguetto | 16h | 6,400 |
| 36 | 2 | Fin Proyecto | milestone | 0d | 2019-01-11 | 2019-01-11 | 35 | 0d |  |  |  |  |
